# Planning Geomec 2D

Schedule from MS Project, 2004-01-05 to 2004-03-12.
TNO Bouw

## Calendars

- Standard: Mon-Fri 08:00-12:00, 13:00-17:00; Sat-Sun off.

## Resources

| Resource |
| --- |
| fnc |
| wed |
| lnb |
| gdo |
| 43 |
| 2 |
| 3 |
| 1 |
| ssga |

## Schedule

| ID | WBS | Task | Duration | Start | Finish | Predecessors | Total slack | Free slack | Constraint | Resources | Work |
| --- | --- | --- | --- | --- | --- | --- | --- | --- | --- | --- | --- |
| 1 | 1 | **Implement 2D-object structures** | 10d | 2004-03-01 | 2004-03-12 |  | 0d |  | start no earlier than 2004-03-01 |  | 56h |
| 2 | 1.1 | Adjust model structure | 4d | 2004-03-01 | 2004-03-04 |  | 1d | 0d |  | lnb | 32h |
| 3 | 1.2 | Model Save/Load | 1d | 2004-03-09 | 2004-03-09 |  | 3d |  |  | lnb | 8h |
| 4 | 1.3 | **Horizon** | 2d | 2004-03-05 | 2004-03-08 | 2 | 4d |  |  |  | 16h |
| 5 | 1.3.1 | Adjust existing model | 1d | 2004-03-05 | 2004-03-05 |  | 4d | 0d |  | lnb | 8h |
| 6 | 1.3.2 | Conversion | 1d | 2004-03-08 | 2004-03-08 | 5 | 4d |  |  | lnb | 8h |
| 7 | 1.3.3 | Dialog | 1d | 2004-03-05 | 2004-03-05 |  | 5d |  |  |  |  |
| 8 | 1.4 | **Boundary** | 5d | 2004-03-05 | 2004-03-11 | 2 | 1d |  |  |  |  |
| 9 | 1.4.1 | Implement structure | 2d | 2004-03-05 | 2004-03-08 |  | 4d |  |  |  |  |
| 10 | 1.4.2 | Conversion | 1d | 2004-03-05 | 2004-03-05 |  | 5d |  |  |  |  |
| 11 | 1.4.3 | Dialog | 1d | 2004-03-05 | 2004-03-05 |  | 5d |  |  |  |  |
| 12 | 1.4.4 | Cropping / Stretching | 5d | 2004-03-05 | 2004-03-11 |  | 1d |  |  |  |  |
| 13 | 1.5 | **Element set** | 4d | 2004-03-05 | 2004-03-10 | 2 | 2d |  |  |  |  |
| 14 | 1.5.1 | Conversion | 4d | 2004-03-05 | 2004-03-10 |  | 2d |  |  |  |  |
| 15 | 1.5.2 | Adjust Dialog | 0.5d | 2004-03-05 | 2004-03-05 |  | 5.5d |  |  |  |  |
| 16 | 1.5.3 | Design new elements | 1d | 2004-03-05 | 2004-03-05 |  | 5d |  |  |  |  |
| 17 | 1.5.4 | 3D Import | 1d | 2004-03-05 | 2004-03-05 |  | 5d |  |  |  |  |
| 18 | 1.6 | **Point set** | 4d | 2004-03-01 | 2004-03-04 |  | 6d |  |  |  |  |
| 19 | 1.6.1 | Conversion | 4d | 2004-03-01 | 2004-03-04 |  | 6d |  |  |  |  |
| 20 | 1.6.2 | Adjust dialog | 0.5d | 2004-03-01 | 2004-03-01 |  | 9.5d |  |  |  |  |
| 21 | 1.6.3 | 3D Import | 1d | 2004-03-01 | 2004-03-01 |  | 9d |  |  |  |  |
| 22 | 1.7 | **Fault** | 10d | 2004-03-01 | 2004-03-12 |  | 0d |  |  |  |  |
| 23 | 1.7.1 | Insertion | 10d | 2004-03-01 | 2004-03-12 |  | 0d |  |  |  |  |
| 24 | 1.7.2 | Offset | 7d | 2004-03-01 | 2004-03-09 |  | 3d |  |  |  |  |
| 25 | 1.7.3 | Dialog | 2d | 2004-03-01 | 2004-03-02 |  | 8d |  |  |  |  |
| 26 | 1.7.4 | Conversion | 2d | 2004-03-01 | 2004-03-02 |  | 8d |  |  |  |  |

| ID | WBS | Task | Duration | Start | Finish | Predecessors | Total slack | Free slack |
| --- | --- | --- | --- | --- | --- | --- | --- | --- |
| 27 | 1.8 | **Formation** | 2d | 2004-03-01 | 2004-03-02 |  | 8d |  |
| 28 | 1.8.1 | Adjust existing object | 1d | 2004-03-01 | 2004-03-01 |  | 9d |  |
| 29 | 1.8.2 | Conversion | 1d | 2004-03-01 | 2004-03-01 |  | 9d |  |
| 30 | 1.8.3 | Adjust dialog | 1d | 2004-03-01 | 2004-03-01 |  | 9d |  |
| 31 | 1.8.4 | Compartment implementation | 2d | 2004-03-01 | 2004-03-02 |  | 8d |  |
| 32 | 2 | **GM2 Import** | 1d | 2004-01-05 | 2004-01-05 |  | 49d |  |
| 33 | 2.1 | Horizon | 1d | 2004-01-05 | 2004-01-05 |  | 49d |  |
| 34 | 2.2 | Fault | 1d | 2004-01-05 | 2004-01-05 |  | 49d |  |
| 35 | 2.3 | Formation | 1d | 2004-01-05 | 2004-01-05 |  | 49d |  |
| 36 | 2.4 | Meshing parameters | 1d | 2004-01-05 | 2004-01-05 |  | 49d |  |
| 37 | 2.5 | Boundary | 1d | 2004-01-05 | 2004-01-05 |  | 49d |  |
| 39 | 3 | **Implement view** | 34d | 2004-01-05 | 2004-02-19 |  | 16d |  |
| 40 | 3.1 | **Geology view** | 34d | 2004-01-05 | 2004-02-19 |  | 16d |  |
| 41 | 3.1.1 | Visualisation of horizon, fault boundary | 2d | 2004-01-05 | 2004-01-06 |  | 48d |  |
| 42 | 3.1.2 | Horizon, fault highlighting | 2d | 2004-01-05 | 2004-01-06 |  | 48d |  |
| 43 | 3.1.3 | Vertex management | 10d | 2004-01-05 | 2004-01-16 |  | 38d | 0d |
| 44 | 3.1.4 | Point movement | 2d | 2004-01-19 | 2004-01-20 | 43 | 38d |  |
| 45 | 3.1.5 | Point insertion | 2d | 2004-01-19 | 2004-01-20 | 43 | 38d |  |
| 46 | 3.1.6 | Point removal | 2d | 2004-01-19 | 2004-01-20 | 43 | 38d |  |
| 47 | 3.1.7 | Merging horizon | 5d | 2004-01-05 | 2004-01-09 |  | 45d |  |
| 48 | 3.1.8 | Background results | 2d | 2004-02-18 | 2004-02-19 | 72 | 16d |  |
| 49 | 3.2 | **Mesh view** | 2d | 2004-01-05 | 2004-01-06 |  | 48d |  |
| 50 | 3.2.1 | Compartment selection | 2d | 2004-01-05 | 2004-01-06 |  | 48d |  |
| 51 | 3.2.2 | Mapping distributed properties | 1d | 2004-01-05 | 2004-01-05 |  | 49d |  |

| ID | WBS | Task | Type | Duration | Start | Finish | Predecessors | Total slack | Free slack | Resources | Work |
| --- | --- | --- | --- | --- | --- | --- | --- | --- | --- | --- | --- |
| 53 | 4 | **General meshing** |  | 5d | 2004-02-02 | 2004-02-06 |  | 25d |  |  |  |
| 54 | 4.1 | Insert n.f. |  | 2d | 2004-02-02 | 2004-02-03 | 57 | 28d |  |  |  |
| 55 | 4.2 | Insert interface elementen |  | 5d | 2004-02-02 | 2004-02-06 | 57 | 25d |  |  |  |
| 57 | 5 | **Meshing option “Triangle”** |  | 20d | 2004-01-05 | 2004-01-30 |  | 13d | 0d |  | 160h |
| 58 | 5.1 | Create meshing library in Geometry |  | 10d | 2004-01-05 | 2004-01-16 |  | 15d | 0d | wed | 80h |
| 59 | 5.2 | Test meshing library |  | 2d | 2004-01-19 | 2004-01-20 | 58 | 18d | 0d | wed | 16h |
| 60 | 5.3 | Couple mesh library to Geomec 2D-model |  | 3d | 2004-01-21 | 2004-01-23 | 59 | 18d |  | wed | 24h |
| 61 | 5.4 | GUI control mesher |  | 2d | 2004-01-29 | 2004-01-30 | 58 | 13d |  | wed | 16h |
| 62 | 5.5 | Implement automatic fault adjustment |  | 3d | 2004-01-26 | 2004-01-28 | 58 | 15d |  | wed | 24h |
| 65 | 6 | **Analysis** |  | 10d | 2004-01-30 | 2004-02-13 | 57 | 12d | 0d |  | 80h |
| 66 | 6.1 | Design new elements |  | 1d | 2004-02-02 | 2004-02-02 |  | 13d | 1d | wed | 8h |
| 67 | 6.2 | Adjust analysis options dialog |  | 1d | 2004-02-03 | 2004-02-03 |  | 12d | 0d | wed | 8h |
| 68 | 6.3 | Filos write routine |  | 8d | 2004-02-04 | 2004-02-13 | 67, 66 | 12d |  | wed | 64h |
| 69 | 6.4 | Diana kernel | milestone | 0d | 2004-01-30 | 2004-01-30 |  | 22d |  | ssga |  |
| 71 | 7 | **Post-processing** |  | 8d | 2004-02-16 | 2004-02-25 | 65 | 12d |  |  |  |
| 72 | 7.1 | Adjust and test the result server for 2D |  | 2d | 2004-02-16 | 2004-02-17 |  | 16d | 0d |  |  |
| 73 | 7.2 | Implement structure for 3D-results |  | 2d | 2004-02-16 | 2004-02-17 |  | 12d | 0d |  |  |
| 74 | 7.3 | Adjust and test the result tree for 2D |  | 1d | 2004-02-18 | 2004-02-18 | 73 | 12d | 0d |  |  |
| 75 | 7.4 | Test result projection on the mesh view |  | 2d | 2004-02-19 | 2004-02-20 | 74 | 15d |  |  |  |
| 76 | 7.5 | Adjust well path and graph view for 2D |  | 3d | 2004-02-19 | 2004-02-23 | 74 | 14d |  |  |  |
| 77 | 7.6 | Adjust history view for 2D |  | 1d | 2004-02-19 | 2004-02-19 | 74 | 16d |  |  |  |
| 78 | 7.7 | Adjust result export tool for 2D |  | 5d | 2004-02-19 | 2004-02-25 | 74 | 12d |  |  |  |
| 80 | 8 | **Import in 3D-model** |  | 3d | 2004-01-05 | 2004-01-07 |  | 47d |  |  |  |
| 81 | 8.1 | Adjust cross section for import |  | 3d | 2004-01-05 | 2004-01-07 |  | 47d |  |  |  |
| 82 | 8.2 | Define imported result object |  | 1d | 2004-01-05 | 2004-01-05 |  | 49d |  |  |  |
| 83 | 8.3 | Adjust GUI for result enumeration |  | 4h | 2004-01-05 | 2004-01-05 |  | 49.5d |  |  |  |
| 84 | 8.4 | Storage in 3D-database |  | 4h | 2004-01-05 | 2004-01-05 |  | 49.5d |  |  |  |
| 86 | 9 | Help |  | 15d | 2004-01-05 | 2004-01-23 |  | 35d |  |  |  |

| ID | WBS | Task | Duration | Start | Finish | Predecessors | Total slack | Free slack |
| --- | --- | --- | --- | --- | --- | --- | --- | --- |
| 87 | 10 | **Testing and bug fixing** | 35d | 2004-01-05 | 2004-02-20 |  | 15d |  |
| 88 | 10.1 | Regressive testing existing | 5d | 2004-01-05 | 2004-01-09 |  | 15d | 0d |
| 89 | 10.2 | Bug fixing and stabilizing | 30d | 2004-01-12 | 2004-02-20 | 88 | 15d |  |
