# planning

Schedule from MS Project, 2003-01-15 to 2003-10-02, A marks actual dates.
TNO Bouw

## Calendars

- Standard: Mon-Fri 08:00-12:00, 13:00-17:00; Sat-Sun off.

## Resources

| Resource | Group |
| --- | --- |
| wed | dsp |
| lnb | dsp |
| htg | dsp |
| tnma | dsp |
| fnc | diana |
| gdo | diana |
| ssga | diana |
| mrh |  |

## Schedule

| ID | WBS | Task | Type | Duration | Start | Finish | Predecessors | Complete | Remaining | Total slack | Free slack | Constraint | Resources | Work | Actual work |
| --- | --- | --- | --- | --- | --- | --- | --- | --- | --- | --- | --- | --- | --- | --- | --- |
| 1 | 1 | **Analysis** |  | 96d | 2003-01-27 A | 2003-06-10 A |  | 100% |  |  |  |  |  | 96h | 96h |
| 2 | 1.1 | Adapt GM41 so that it can handle tetrahedron and contact elements (SSGA) | milestone | 0d | 2003-02-12 A | 2003-02-12 A | 4 | 100% |  |  |  |  | ssga |  |  |
| 3 | 1.2 | Write routine which check the status of the model report the missing items to the user |  | 4d | 2003-06-03 A | 2003-06-10 A |  | 100% |  |  |  |  | wed | 32h | 32h |
| 4 | 1.3 | Write routine which prepares the filos file for analysis + read-back of results |  | 8d | 2003-01-27 A | 2003-02-10 A |  | 100% |  |  |  |  | wed | 64h | 64h |
| 5 | 2 | **Results** |  | 155.9d | 2003-01-16 A | 2003-08-21 |  | 67% | 51.97d | 29.7d |  |  |  | 240h | 160h |
| 6 | 2.1 | **Program result** |  | 155.9d | 2003-01-16 A | 2003-08-21 |  | 67% | 51.97d | 29.7d |  |  |  | 240h | 160h |
| 7 | 2.1.1 | Design and implement IMatrix -> CMatrix ITensor -> CTensor architecture |  | 3d | 2003-01-16 A | 2003-01-30 A |  | 100% |  |  |  |  | lnb | 24h | 24h |
| 8 | 2.1.2 | Agree and formalize elementary result list |  | 3d | 2003-02-24 A | 2003-02-27 A |  | 100% |  |  |  |  | lnb | 24h | 24h |
| 9 | 2.1.3 | Redesign a more memory efficient GeoResult |  | 2d | 2003-01-29 A | 2003-02-10 A | 7 | 100% |  |  |  |  | lnb | 16h | 16h |
| 10 | 2.1.4 | Redesign a more memory efficient result server |  | 2d | 2003-01-29 A | 2003-02-11 A | 9 | 100% |  |  |  |  | lnb | 16h | 16h |
| 11 | 2.1.5 | Implement result tree |  | 5d | 2003-02-28 A | 2003-03-07 A | 10 | 100% |  |  |  |  | lnb | 40h | 40h |
| 12 | 2.1.6 | **Implement interface results** |  | 57.9d | 2003-06-03 A | 2003-08-21 | 11, 34 | 33% | 38.6d | 29.7d |  |  |  | 120h | 40h |
| 13 | 2.1.6.1 | Relative displacement calc |  | 10d | 2003-06-23 | 2003-08-21 |  |  |  | 28.7d |  | start no earlier than 2003-06-10 | wed | 80h |  |
| 14 | 2.1.6.2 | Connection with mesher |  | 5d | 2003-06-03 A | 2003-06-10 A |  | 100% |  |  |  |  | lnb | 40h | 40h |
| 15 | 3 | **RPN Calculator** |  | 161.6d | 2003-02-10 A | 2003-09-23 |  | 65% | 57.04d | 7d |  |  |  | 136h | 88h |
| 16 | 3.1 | Gather requirements for result calculator and a pre processor calculator. Agree with Shell |  | 4d | 2003-02-10 A | 2003-02-13 A |  | 100% |  |  |  |  | wed; lnb | 32h | 32h |
| 17 | 3.2 | Create integrated design for result- and pre-processor calculator based on existing calculator code |  | 2d | 2003-02-14 A | 2003-02-17 A | 16 | 100% |  |  |  |  | lnb | 16h | 16h |
| 18 | 3.3 | Implement calculator. (RPN formula should be saved in the Geomec 3.2 database) |  | 3d | 2003-02-18 A | 2003-02-20 A | 17 | 100% |  |  |  |  | lnb | 24h | 24h |
| 19 | 3.4 | Integrate calculator in result and element set architecture |  | 2d | 2003-02-21 A | 2003-04-16 A | 18 | 100% |  |  |  |  | lnb | 16h | 16h |
| 20 | 3.5 | Test result- and pre-processor calculator + bugfixing |  | 6d | 2003-09-11 | 2003-09-23 | 19 |  |  | 7d |  | start no earlier than 2003-06-10 | wed | 48h |  |
| 21 | 4 | **Meshing** |  | 110d | 2003-01-15 A | 2003-06-17 |  | 94% | 6.96d | 70.4d | 0d |  |  | 632h | 592h |
| 22 | 4.1 | Define high level requirements of tetrahedron volumetric mesher |  | 2d | 2003-01-28 A | 2003-01-30 A |  | 100% |  |  |  |  | wed | 16h | 16h |
| 23 | 4.2 | Define input validation criteria for mesher |  | 3d | 2003-04-03 A | 2003-04-08 A | 25 | 100% |  |  |  | start no earlier than 2003-03-31 | mrh | 24h | 24h |
| 24 | 4.3 | Study on the ‘chinese’ mesher |  | 10d | 2003-01-30 A | 2003-02-14 A |  | 100% |  |  |  |  | mrh | 80h | 80h |
| 25 | 4.4 | Define low level interface of tet-mesher in geometry |  | 5d | 2003-01-15 A | 2003-01-30 A | 24 | 100% |  |  |  |  | wed | 40h | 40h |
| 26 | 4.5 | Define low level refinement interface for tet-mesher |  | 3d | 2003-02-10 A | 2003-02-14 A | 25 | 100% |  |  |  |  | tnma | 24h | 24h |
| 27 | 4.6 | Test low level interface of mesher |  | 4d | 2003-01-21 A | 2003-02-17 A |  | 100% |  |  |  |  | mrh | 32h | 32h |

| ID | WBS | Task | Duration | Start | Finish | Predecessors | Complete | Total slack | Free slack | Constraint | Resources | Work | Actual work |
| --- | --- | --- | --- | --- | --- | --- | --- | --- | --- | --- | --- | --- | --- |
| 28 | 4.7 | **Implement wrapper for FEMGEN tetrahedron mesher in geometry** | 41.6d | 2003-02-17 A | 2003-04-15 A |  | 100% |  |  |  |  | 96h | 96h |
| 29 | 4.7.1 | Derived bodies from surfaces | 3d | 2003-02-17 A | 2003-02-19 A | 24 | 100% |  |  |  | mrh | 24h | 24h |
| 30 | 4.7.2 | Write FEMGEN startup file | 2d | 2003-02-20 A | 2003-02-21 A | 29 | 100% |  |  |  | mrh | 16h | 16h |
| 31 | 4.7.3 | Run FEMGV | 1d | 2003-02-24 A | 2003-02-24 A | 30 | 100% |  |  |  | mrh | 8h | 8h |
| 32 | 4.7.4 | Read FEMGV result file | 3d | 2003-02-28 A | 2003-03-04 A | 31 | 100% |  |  | start no earlier than 2003-02-27 | mrh | 24h | 24h |
| 33 | 4.7.5 | Fill C++ class hierarchy | 3d | 2003-03-07 A | 2003-04-15 A | 32 | 100% |  |  |  | lnb | 24h | 24h |
| 34 | 4.8 | **Contact elements** | 76.3d | 2003-02-06 A | 2003-05-23 A |  | 100% |  |  |  |  | 200h | 200h |
| 35 | 4.8.1 | Adapt core mesher (tetra) | 12d | 2003-02-06 A | 2003-04-03 A |  | 100% |  |  |  | mrh | 96h | 96h |
| 36 | 4.8.2 | Adapt horizons and faults | 3d | 2003-05-20 A | 2003-05-23 A | 35 | 100% |  |  | start no earlier than 2003-04-14 | lnb | 24h | 24h |
| 37 | 4.8.3 | Adapt tet mesh | 5d | 2003-05-06 A | 2003-05-13 A | 35 | 100% |  |  | start no earlier than 2003-04-14 | lnb | 40h | 40h |
| 38 | 4.8.4 | Adapt hexa mesh | 5d | 2003-05-13 A | 2003-05-20 A |  | 100% |  |  | start no earlier than 2003-04-14 | lnb | 40h | 40h |
| 39 | 4.9 | Integrate mesher in Geomec | 5d | 2003-02-28 A | 2003-04-18 A | 29 | 100% |  |  |  | lnb | 40h | 40h |
| 40 | 4.10 | Save and load mesh | 5d | 2003-03-27 A | 2003-05-06 A | 39 | 100% |  |  |  | lnb | 40h | 40h |
| 41 | 4.11 | Bug fixing core mesher | 5d | 2003-06-11 | 2003-06-17 | 39 |  | 70.4d |  | start no earlier than 2003-06-10 | mrh | 40h |  |
| 42 | 5 | **Online help** | 15d | 2003-06-11 | 2003-07-01 |  |  | 66.6d |  |  |  | 160h |  |
| 43 | 5.1 | Select and buy tools for creating the help | 2d | 2003-06-11 | 2003-06-12 |  |  | 74.4d | 1d | start no earlier than 2003-06-10 | wed | 16h |  |
| 44 | 5.2 | Create the arrangement of help topics | 1d | 2003-06-11 | 2003-06-11 |  |  | 72d | 0d | start no earlier than 2003-06-10 | fnc | 8h |  |
| 45 | 5.3 | Create the arrangement of background theory topics | 1d | 2003-06-12 | 2003-06-12 |  |  | 66d | 0d | start no earlier than 2003-06-10 | fnc | 8h |  |
| 46 | 5.4 | Adjust application for context sensitive help | 3d | 2003-06-16 | 2003-06-23 | 43 |  | 73.4d |  | start no earlier than 2003-06-10 | wed | 24h |  |
| 47 | 5.5 | Write all help topics | 7d | 2003-06-13 | 2003-06-23 | 44 |  | 71.6d | 5d | start no earlier than 2003-06-10 | fnc | 56h |  |
| 48 | 5.6 | Write all background theory topics | 5d | 2003-06-24 | 2003-06-30 | 45 |  | 66.6d | 0d | start no earlier than 2003-06-10 | fnc | 40h |  |
| 49 | 5.7 | Review all help and background theory topics | 1d | 2003-07-01 | 2003-07-01 | 47, 48 |  | 66.6d |  | start no earlier than 2003-06-10 | gdo | 8h |  |
| 50 | 6 | **Post processing** | 64.6d | 2003-01-28 A | 2003-04-28 A |  | 100% |  |  |  |  | 56h | 56h |
| 51 | 6.1 | Adjust bird-eye view | 2d | 2003-01-28 A | 2003-01-30 A |  | 100% |  |  |  | htg | 16h | 16h |
| 52 | 6.2 | Adjust cross section view | 1d | 2003-01-29 A | 2003-01-30 A |  | 100% |  |  |  | htg | 8h | 8h |
| 53 | 6.3 | Adjust top view | 3d | 2003-03-06 A | 2003-04-28 A |  | 100% |  |  |  | lnb | 24h | 24h |
| 54 | 6.4 | Adjust 2D graph view | 1d | 2003-03-19 A | 2003-04-28 A |  | 100% |  |  |  | lnb | 8h | 8h |

| ID | WBS | Task | Type | Duration | Start | Finish | Predecessors | Complete | Remaining | Total slack | Free slack | Constraint | Resources | Work | Actual work |
| --- | --- | --- | --- | --- | --- | --- | --- | --- | --- | --- | --- | --- | --- | --- | --- |
| 55 | 7 | **Element sets** |  | 150d | 2003-01-30 A | 2003-08-27 |  | 52% | 71.41d | 25.6d |  |  |  | 368h | 192.8h |
| 56 | 7.1 | **Create GoCad read and write functionality** |  | 34d | 2003-04-15 A | 2003-05-30 A |  | 100% |  |  |  |  |  | 64h | 64h |
| 57 | 7.1.1 | Formalize GoCad specifications, Shell tags and agree with Shell |  | 3d | 2003-04-15 A | 2003-04-17 A |  | 100% |  |  |  | start no earlier than 2003-04-14 | tnma | 24h | 24h |
| 58 | 7.1.2 | Design, implement and testing |  | 4d | 2003-04-24 A | 2003-04-29 A | 57 | 100% |  |  |  | start no earlier than 2003-04-14 | tnma | 32h | 32h |
| 59 | 7.1.3 | Integrate reader, write in architecture |  | 1d | 2003-05-30 A | 2003-05-30 A | 58 | 100% |  |  |  |  | tnma | 8h | 8h |
| 60 | 7.2 | **Create Eclipse read and write functionality** |  | 56d | 2003-06-11 | 2003-08-27 |  |  |  | 25.6d |  |  |  | 56h |  |
| 61 | 7.2.1 | Formalize Eclipse specifications, Shell tags and agree with Shell |  | 2d | 2003-06-11 | 2003-06-12 |  |  |  | 25.6d | 0d | start no earlier than 2003-06-10 | tnma | 16h |  |
| 62 | 7.2.2 | Design, implement and testing |  | 4d | 2003-06-16 | 2003-08-04 | 61 |  |  | 25.6d | 0d | start no earlier than 2003-06-10 | tnma | 32h |  |
| 63 | 7.2.3 | Integrate reader, write in architecture |  | 1d | 2003-08-27 | 2003-08-27 | 62, 72 |  |  | 25.6d |  | start no earlier than 2003-06-10 | tnma | 8h |  |
| 64 | 7.3 | **Create ASCII elements read / write** |  | 3.5d | 2003-06-09 A | 2003-06-12 |  | 63% | 1.31d | 80.1d |  |  |  | 32h | 20h |
| 65 | 7.3.1 | Formalize ASCII element specifications, Shell tags and agree with Shell |  | 1d | 2003-06-09 A | 2003-06-11 |  | 50% | 0.5d | 80.1d | 0d |  | lnb | 8h | 4h |
| 66 | 7.3.2 | Design, implement and testing |  | 2d | 2003-06-09 A | 2003-06-12 | 65 | 50% | 1d | 80.1d |  |  | lnb | 16h | 8h |
| 67 | 7.3.3 | Integrate reader, write in architecture |  | 1d | 2003-06-09 A | 2003-06-10 A | 66, 72 | 100% |  |  |  |  | lnb | 8h | 8h |
| 68 | 7.4 | **Create Excel elements read/write** |  | 41d | 2003-06-13 | 2003-08-08 |  |  |  | 38.6d |  |  |  | 24h |  |
| 69 | 7.4.1 | Formalize Excel element specifications, Shell tags and agree with Shell |  | 1d | 2003-06-13 | 2003-06-13 |  |  |  | 40d | 0d | start no earlier than 2003-06-10 | tnma | 8h |  |
| 70 | 7.4.2 | Design, implement and testing |  | 1d | 2003-08-07 | 2003-08-07 | 69 |  |  | 38.6d | 0d | start no earlier than 2003-06-10 | tnma | 8h |  |
| 71 | 7.4.3 | Integrate reader, write in architecture |  | 1d | 2003-08-08 | 2003-08-08 | 70, 72 |  |  | 38.6d |  | start no earlier than 2003-06-10 | lnb | 8h |  |
| 72 | 7.5 | **Value storage on element set** |  | 75d | 2003-01-30 A | 2003-05-14 A |  | 100% |  |  |  |  |  | 40h | 40h |
| 73 | 7.5.1 | Adjust element set architecture for value storage |  | 3d | 2003-01-30 A | 2003-02-03 A |  | 100% |  |  |  |  | lnb | 24h | 24h |
| 74 | 7.5.2 | Adjust calculator for element set support | milestone | 0d | 2003-05-14 A | 2003-05-14 A | 15, 73 | 100% |  |  |  |  | lnb |  |  |
| 75 | 7.5.3 | Create or adjust user interface for creating and modifying element value sets |  | 2d | 2003-02-04 A | 2003-02-05 A | 73 | 100% |  |  |  |  | lnb | 16h | 16h |
| 76 | 7.6 | Element to element mapping |  | 6d | 2003-03-10 A | 2003-03-19 A | 72 | 100% |  |  |  |  | wed | 48h | 48h |
| 77 | 7.7 | Adjust quantities |  | 1d | 2003-03-19 A | 2003-03-19 A | 76 | 100% |  |  |  |  | lnb | 8h | 8h |
| 78 | 7.8 | Range checking |  | 4d | 2003-06-30 | 2003-08-05 | 77 |  |  | 35.5d | 0d | start no earlier than 2003-06-10 | lnb | 32h |  |
| 79 | 7.9 | Testing |  | 8d | 2003-03-25 A | 2003-08-18 | 78 | 20% | 6.4d | 33.5d |  |  | wed | 64h | 12.8h |

| ID | WBS | Task | Duration | Start | Finish | Predecessors | Complete | Remaining | Total slack | Free slack | Constraint | Resources | Work | Actual work |
| --- | --- | --- | --- | --- | --- | --- | --- | --- | --- | --- | --- | --- | --- | --- |
| 80 | 8 | **Eclipse model** | 16d | 2003-08-05 | 2003-08-26 | 83 |  |  | 26.6d |  |  |  | 96h |  |
| 81 | 8.1 | Design | 2d | 2003-08-05 | 2003-08-06 |  |  |  | 26.6d | 0d | start no earlier than 2003-06-10 | tnma | 16h |  |
| 82 | 8.2 | Implementation | 10d | 2003-08-13 | 2003-08-26 | 81 |  |  | 26.6d |  | start no earlier than 2003-06-10 | tnma | 80h |  |
| 83 | 9 | **GoCad model** | 78.2d | 2003-03-12 A | 2003-06-30 |  | 75% | 19.19d | 27d | 0d |  |  | 88h | 66.4h |
| 84 | 9.1 | **Design** | 12.5d | 2003-03-12 A | 2003-03-31 A |  | 100% |  |  |  |  |  | 16h | 16h |
| 85 | 9.1.1 | General objects | 1d | 2003-03-12 A | 2003-03-31 A | 92 | 100% |  |  |  |  | lnb | 8h | 8h |
| 86 | 9.1.2 | Integration with supermodel and mesher | 1d | 2003-03-12 A | 2003-03-31 A | 90, 21 | 100% |  |  |  |  | lnb | 8h | 8h |
| 87 | 9.2 | **Implementation** | 69.2d | 2003-03-25 A | 2003-06-30 |  | 70% | 20.76d | 27d |  |  |  | 72h | 50.4h |
| 88 | 9.2.1 | General objects | 4d | 2003-03-26 A | 2003-06-30 | 85 | 70% | 1.2d | 27d |  |  | lnb | 32h | 22.4h |
| 89 | 9.2.2 | Integration with supermodel and mesher | 5d | 2003-03-25 A | 2003-06-27 | 86 | 70% | 1.5d | 28.2d |  |  | lnb | 40h | 28h |
| 90 | 10 | **Super model** | 105.2d | 2003-01-30 A | 2003-06-26 |  | 62% | 40.49d | 70.4d |  |  |  | 264h | 162.4h |
| 91 | 10.1 | **Design** | 72.2d | 2003-03-11 A | 2003-06-19 |  | 54% | 33.01d | 72.9d |  |  |  | 56h | 30.4h |
| 92 | 10.1.1 | General objects | 4d | 2003-03-11 A | 2003-06-16 |  | 50% | 2d | 75.6d | 0d |  | lnb | 32h | 16h |
| 93 | 10.1.2 | Link with mesher | 3d | 2003-03-11 A | 2003-06-19 | 21 | 60% | 1.2d | 70.4d | 0d |  | wed | 24h | 14.4h |
| 94 | 10.2 | **Implementation** | 105.2d | 2003-01-30 A | 2003-06-26 |  | 63% | 38.44d | 70.4d |  |  |  | 208h | 132h |
| 95 | 10.2.1 | General objects | 5d | 2003-03-26 A | 2003-06-18 | 92 | 50% | 2.5d | 75.6d |  |  | lnb | 40h | 20h |
| 96 | 10.2.2 | Link with mesher | 10d | 2003-03-24 A | 2003-06-26 | 93 | 50% | 5d | 70.4d |  |  | lnb | 80h | 40h |
| 97 | 10.2.3 | **Boundary conditions** | 52d | 2003-01-30 A | 2003-04-14 |  | 82% | 9.45d | 123.6d |  |  |  | 88h | 72h |
| 98 | 10.2.3.1 | Global Tensors | 2d | 2003-01-30 A | 2003-02-03 A |  | 100% |  |  |  |  | wed | 16h | 16h |
| 99 | 10.2.3.2 | OpenGL View selections | 3d | 2003-01-30 A | 2003-02-04 A |  | 100% |  |  |  |  | wed | 24h | 24h |
| 100 | 10.2.3.3 | Boundary displacement Dialog | 2d | 2003-04-09 A | 2003-04-14 A |  | 100% |  |  |  | start no earlier than 2003-03-31 | wed | 16h | 16h |
| 101 | 10.2.3.4 | Boundary Pressure Dialog | 2d | 2003-04-09 A | 2003-04-14 A |  | 100% |  |  |  | start no earlier than 2003-03-31 | wed | 16h | 16h |
| 102 | 10.2.3.5 | Incorporation in filos routine | 2d | 2003-03-19 | 2003-03-20 |  |  |  | 139.6d |  |  | wed | 16h |  |
| 103 | 11 | **Overall testing** | 67.9d | 2003-06-30 | 2003-10-02 | 83 |  |  | 0d |  |  |  | 152h |  |
| 104 | 11.1 | Create and delete objects | 2d | 2003-09-23 | 2003-09-25 |  |  |  | 5d |  |  | wed | 16h |  |
| 105 | 11.2 | Validation | 2d | 2003-09-25 | 2003-09-30 |  |  |  | 2d |  |  | wed | 16h |  |
| 106 | 11.3 | Meshing | 10d | 2003-08-26 | 2003-09-11 |  |  |  | 15d |  |  | wed | 80h |  |

| ID | WBS | Task | Duration | Start | Finish | Predecessors | Complete | Remaining | Total slack | Free slack | Constraint | Resources | Work | Actual work |
| --- | --- | --- | --- | --- | --- | --- | --- | --- | --- | --- | --- | --- | --- | --- |
| 107 | 11.4 | **Results** | 67.9d | 2003-06-30 | 2003-10-02 |  |  |  | 0d |  |  |  | 40h |  |
| 108 | 11.4.1 | Projection on objects. Bird-eye, cross section etc. | 3d | 2003-06-30 | 2003-08-26 |  |  |  | 27d |  |  | wed | 24h |  |
| 109 | 11.4.2 | Graph view (Wells) | 2d | 2003-09-30 | 2003-10-02 |  |  |  | 0d |  |  | wed | 16h |  |
| 110 | 12 | **Tetra testing** | 101.5d | 2003-01-27 A | 2003-06-17 | 50 | 50% | 50.75d | 76.6d |  |  |  | 80h | 40h |
| 111 | 12.1 | Cross sections | 3d | 2003-01-28 A | 2003-03-31 A |  | 100% |  |  |  |  | htg | 24h | 24h |
| 112 | 12.2 | Well path | 2d | 2003-01-27 A | 2003-03-31 A |  | 100% |  |  |  |  | htg | 16h | 16h |
| 113 | 12.3 | **Dstabor** | 5d | 2003-06-11 | 2003-06-17 |  |  |  | 76.6d |  |  |  | 40h |  |
| 114 | 12.3.1 | System testing | 3d | 2003-06-11 | 2003-06-13 |  |  |  | 76.6d | 0d | start no earlier than 2003-06-10 | htg | 24h |  |
| 115 | 12.3.2 | Model | 2d | 2003-06-16 | 2003-06-17 | 114 |  |  | 76.6d |  | start no earlier than 2003-06-10 | gdo | 16h |  |
| 116 | 13 | **Deformed mesh post processing** | 130d | 2003-02-12 A | 2003-08-12 |  | 80% | 26d | 36.6d |  |  |  | 120h | 96h |
| 117 | 13.1 | Design of the 'moving' mesh node | 2d | 2003-02-12 A | 2003-02-13 A |  | 100% |  |  |  | start no earlier than 2003-02-12 | tnma | 16h | 16h |
| 118 | 13.2 | Implementation of 'moving' mesh node | 3d | 2003-02-17 A | 2003-02-19 A | 117 | 100% |  |  |  |  | tnma | 24h | 24h |
| 119 | 13.3 | Integration of 'moving' mesh node in mesher | 4d | 2003-02-20 A | 2003-03-03 A | 118 | 100% |  |  |  |  | tnma | 32h | 32h |
| 120 | 13.4 | GUI for moving mesh node | 3d | 2003-02-24 A | 2003-02-26 A |  | 100% |  |  |  |  | tnma | 24h | 24h |
| 121 | 13.5 | Testing | 3d | 2003-08-08 | 2003-08-12 | 120, 119 |  |  | 36.6d |  | start no earlier than 2003-06-10 | tnma | 24h |  |
| 122 | 14 | **3.1 Release Bug Fixing and service** | 4d | 2003-02-17 A | 2003-02-20 A |  | 100% |  |  |  |  |  | 32h | 32h |
| 123 | 14.1 | Extend surfaces (bug) | 2d | 2003-02-17 A | 2003-02-18 A |  | 100% |  |  |  |  | wed | 16h | 16h |
| 124 | 14.2 | Brent model import (.GM3) | 2d | 2003-02-19 A | 2003-02-20 A | 123 | 100% |  |  |  |  | wed | 16h | 16h |
| 125 | 15 | **Testing 3.2** | 5d | 2003-06-11 | 2003-06-17 |  |  |  | 69.1d |  |  |  |  |  |
| 126 | 15.1 | **Building tetra test models** | 5d | 2003-06-11 | 2003-06-17 |  |  |  | 69.1d | 0d |  |  |  |  |
| 127 | 15.1.1 | Build surface generator | 2d | 2003-06-11 | 2003-06-12 |  |  |  | 70.1d | 1d | start no earlier than 2003-06-10 |  |  |  |
| 128 | 15.1.2 | Design test models | 3d | 2003-06-11 | 2003-06-13 |  |  |  | 69.1d | 0d | start no earlier than 2003-06-10 |  |  |  |
| 129 | 15.1.3 | Implement test models | 2d | 2003-06-16 | 2003-06-17 | 127, 128 |  |  | 69.1d |  | start no earlier than 2003-06-10 |  |  |  |
| 130 | 16 | **Test model building** | 34.6d | 2003-02-12 | 2003-04-01 |  |  |  | 132d |  |  |  | 112h |  |
| 131 | 16.1 | Create and delete objects | 2d | 2003-03-24 | 2003-03-26 |  |  |  | 135.6d |  |  | wed | 16h |  |
| 132 | 16.2 | Validation | 2d | 2003-03-27 | 2003-04-01 |  |  |  | 132d |  |  | wed | 16h |  |
| 133 | 16.3 | Meshing | 10d | 2003-02-12 | 2003-03-06 |  |  |  | 149.6d |  |  | wed | 80h |  |

| ID | WBS | Task | Duration | Start | Finish | Predecessors | Total slack | Free slack | Constraint | Resources | Work |
| --- | --- | --- | --- | --- | --- | --- | --- | --- | --- | --- | --- |
| 134 | 17 | **Hexahedron analysis test** | 3d | 2003-06-11 | 2003-06-13 |  | 78.6d |  |  |  |  |
| 135 | 17.1 | Check linear analysis | 1d | 2003-06-11 | 2003-06-11 |  | 78.6d | 0d | start no earlier than 2003-06-10 |  |  |
| 136 | 17.2 | Check non- linear analysis | 1d | 2003-06-12 | 2003-06-12 | 135 | 78.6d | 0d | start no earlier than 2003-06-10 |  |  |
| 137 | 17.3 | Check non- and linear sliping element analysis | 1d | 2003-06-13 | 2003-06-13 | 136 | 78.6d |  | start no earlier than 2003-06-10 |  |  |
| 138 | 18 | **Tetrahedron analysis test** | 11.5d | 2003-06-18 | 2003-07-03 | 126 | 65.1d |  |  | tnma | 264h |
| 139 | 18.1 | **Check sub model meshing** | 5d | 2003-06-18 | 2003-06-24 |  | 67.1d | 0d |  | tnma | 80h |
| 140 | 18.1.1 | Check fault models | 3d | 2003-06-18 | 2003-06-20 |  | 69.1d |  | start no earlier than 2003-06-10 | tnma | 24h |
| 141 | 18.1.2 | Check isolated volume models | 2d | 2003-06-23 | 2003-06-24 |  | 67.1d |  | start no earlier than 2003-06-10 | tnma | 16h |
| 142 | 18.2 | **Check super model meshing** | 5d | 2003-06-25 | 2003-07-01 | 139 | 65.1d | 0d |  | tnma | 80h |
| 143 | 18.2.1 | Check horizon insertion | 2d | 2003-06-30 | 2003-07-01 |  | 65.1d |  | start no earlier than 2003-06-10 | tnma | 16h |
| 144 | 18.2.2 | Check boundary resizing | 3d | 2003-06-25 | 2003-06-27 |  | 67.1d |  | start no earlier than 2003-06-10 | tnma | 24h |
| 145 | 18.3 | Check linear analysis | 4h | 2003-07-02 | 2003-07-02 | 142 | 65.1d | 0d | start no earlier than 2003-06-10 | tnma | 4h |
| 146 | 18.4 | Check non-linear analysis | 4h | 2003-07-02 | 2003-07-02 | 145 | 65.1d | 0d | start no earlier than 2003-06-10 | tnma | 4h |
| 147 | 18.5 | Check non- and linear analysis with faults | 4h | 2003-07-03 | 2003-07-03 | 146 | 65.1d |  | start no earlier than 2003-06-10 | tnma | 4h |
| 148 | 19 | **Result test** | 1d? | 2003-06-11 | 2003-06-11 |  | 80.6d |  |  |  |  |
| 149 | 19.1 | Check result linear | 1d? | 2003-06-11 | 2003-06-11 |  | 80.6d |  | start no earlier than 2003-06-10 |  |  |
| 150 | 19.2 | Check result non-linear | 1d? | 2003-06-11 | 2003-06-11 |  | 80.6d |  | start no earlier than 2003-06-10 |  |  |
| 151 | 19.3 | Check fault results | 1d? | 2003-06-11 | 2003-06-11 |  | 80.6d |  | start no earlier than 2003-06-10 |  |  |
| 152 | 19.4 | Check stabor results | 1d? | 2003-06-11 | 2003-06-11 |  | 80.6d |  | start no earlier than 2003-06-10 |  |  |
| 153 | 19.5 | Check result invalidation | 1d? | 2003-06-11 | 2003-06-11 |  | 80.6d |  | start no earlier than 2003-06-10 |  |  |
| 154 | 19.6 | **Check result export** | 1d? | 2003-06-11 | 2003-06-11 |  | 80.6d |  |  |  |  |
| 155 | 19.6.1 | Check weighting | 1d? | 2003-06-11 | 2003-06-11 |  | 80.6d |  | start no earlier than 2003-06-10 |  |  |
| 156 | 19.6.2 | Check combination result - geometry to export on | 1d? | 2003-06-11 | 2003-06-11 |  | 80.6d |  | start no earlier than 2003-06-10 |  |  |
| 157 | 19.6.3 | Check NAN-values | 1d? | 2003-06-11 | 2003-06-11 |  | 80.6d |  | start no earlier than 2003-06-10 |  |  |
| 158 | 19.6.4 | Check export tags of results | 1d? | 2003-06-11 | 2003-06-11 |  | 80.6d |  | start no earlier than 2003-06-10 |  |  |
| 159 | 19.6.5 | Check re-import | 1d? | 2003-06-11 | 2003-06-11 |  | 80.6d |  | start no earlier than 2003-06-10 |  |  |
| 160 | 19.7 | Check user - defined results | 1d? | 2003-06-11 | 2003-06-11 |  | 80.6d |  | start no earlier than 2003-06-10 |  |  |

| ID | WBS | Task | Duration | Start | Finish | Total slack | Constraint |
| --- | --- | --- | --- | --- | --- | --- | --- |
| 161 | 20 | **Import test** | 1d? | 2003-06-11 | 2003-06-11 | 80.6d |  |
| 162 | 20.1 | **Gocad file format** | 1d? | 2003-06-11 | 2003-06-11 | 80.6d |  |
| 163 | 20.1.1 | Solid | 1d? | 2003-06-11 | 2003-06-11 | 80.6d | start no earlier than 2003-06-10 |
| 164 | 20.1.2 | Surface | 1d? | 2003-06-11 | 2003-06-11 | 80.6d | start no earlier than 2003-06-10 |
| 165 | 20.2 | **Ascii** | 1d? | 2003-06-11 | 2003-06-11 | 80.6d |  |
| 166 | 20.2.1 | Element set | 1d? | 2003-06-11 | 2003-06-11 | 80.6d | start no earlier than 2003-06-10 |
| 167 | 20.2.2 | Point set | 1d? | 2003-06-11 | 2003-06-11 | 80.6d | start no earlier than 2003-06-10 |
| 168 | 20.2.3 | Input tags | 1d? | 2003-06-11 | 2003-06-11 | 80.6d | start no earlier than 2003-06-10 |
| 169 | 20.3 | **Excel** | 1d? | 2003-06-11 | 2003-06-11 | 80.6d |  |
| 170 | 20.3.1 | Point set | 1d? | 2003-06-11 | 2003-06-11 | 80.6d | start no earlier than 2003-06-10 |
| 171 | 20.3.2 | Elementset | 1d? | 2003-06-11 | 2003-06-11 | 80.6d | start no earlier than 2003-06-10 |
| 172 | 20.3.3 | Input tags | 1d? | 2003-06-11 | 2003-06-11 | 80.6d | start no earlier than 2003-06-10 |
| 173 | 20.4 | **Rpn calculator** | 1d? | 2003-06-11 | 2003-06-11 | 80.6d |  |
| 174 | 20.4.1 | Point set | 1d? | 2003-06-11 | 2003-06-11 | 80.6d | start no earlier than 2003-06-10 |
| 175 | 20.4.2 | Elementset | 1d? | 2003-06-11 | 2003-06-11 | 80.6d | start no earlier than 2003-06-10 |
| 176 | 20.5 | Assignment of properties in dialog | 1d? | 2003-06-11 | 2003-06-11 | 80.6d | start no earlier than 2003-06-10 |
| 177 | 20.6 | Export of import data | 1d? | 2003-06-11 | 2003-06-11 | 80.6d | start no earlier than 2003-06-10 |
| 178 | 20.7 | Generation of surfaces | 1d? | 2003-06-11 | 2003-06-11 | 80.6d | start no earlier than 2003-06-10 |
| 179 | 21 | 3.2 Release Bug Fixing and service | 1d? | 2003-10-01 | 2003-10-01 | 0.6d | start no earlier than 2003-10-01 |
