# planning33

Schedule from MS Project, 2003-09-29 to 2003-11-21, A marks actual dates.
TNO Bouw

## Calendars

- Standard: Mon-Fri 08:00-12:00, 13:00-17:00; Sat-Sun off.

## Resources

| Resource | Group |
| --- | --- |
| wed | dsp |
| lnb | dsp |
| fnc | diana |
| gdo |  |
| ssga |  |
| shell |  |
| tnma |  |
| mrh |  |

## Schedule

| ID | WBS | Task | Duration | Start | Finish | Predecessors | Complete | Remaining | Total slack | Free slack | Constraint | Deadline | Resources | Work | Actual work |
| --- | --- | --- | --- | --- | --- | --- | --- | --- | --- | --- | --- | --- | --- | --- | --- |
| 1 | 1 | **Vector results** | 12d | 2003-09-29 | 2003-10-14 |  |  |  | 28d |  |  |  |  | 56h |  |
| 2 | 1.1 | Specification vector results | 2d | 2003-09-29 | 2003-09-30 |  |  |  | 28d | 0d |  |  | gdo | 16h |  |
| 3 | 1.2 | Implementation vector results | 5d | 2003-10-06 | 2003-10-10 | 2 |  |  | 28d | 0d |  |  | lnb | 40h |  |
| 4 | 1.3 | Help | 1d | 2003-10-13 | 2003-10-13 | 3 |  |  | 28d | 0d |  |  |  |  |  |
| 5 | 1.4 | Testing | 1d | 2003-10-14 | 2003-10-14 | 4 |  |  | 28d |  |  |  |  |  |  |
| 6 | 2 | **Incoorporation of D-casing** | 28d? | 2003-10-15 | 2003-11-21 |  |  |  | 8d | 0d |  |  |  |  |  |
| 7 | 2.1 | Incorporation of well object | 5d? | 2003-10-15 | 2003-10-21 |  |  |  | 8d |  | start no earlier than 2003-10-15 | 2003-11-01 |  |  |  |
| 8 | 2.2 | Incoorporation of graphview | 5d? | 2003-11-10 | 2003-11-14 | 7 |  |  | 0d |  | start no earlier than 2003-11-10 | 2003-11-15 |  |  |  |
| 9 | 2.3 | Testing well path | 2d | 2003-11-17 | 2003-11-18 | 7, 8 |  |  | 14d |  |  |  |  |  |  |
| 10 | 2.4 | Incooperation of D-Casing lib | 5d | 2003-11-17 | 2003-11-21 | 7, 8 |  |  | 11d |  |  |  |  |  |  |
| 11 | 3 | **Fist link** | 30d? | 2003-09-29 | 2003-11-07 |  |  |  | 10d |  |  |  |  | 8h |  |
| 12 | 3.1 | Specification fist link | 1d? | 2003-11-03 | 2003-11-03 |  |  |  | 10d | 0d | start no earlier than 2003-11-01 |  | fnc | 8h |  |
| 13 | 3.2 | Design fist link | 3d | 2003-11-04 | 2003-11-06 | 12 |  |  | 10d | 0d |  |  |  |  |  |
| 14 | 3.3 | Implementation fist link | 1d? | 2003-11-07 | 2003-11-07 | 13 |  |  | 10d |  |  |  |  |  |  |
| 15 | 3.4 | Help | 1d | 2003-09-29 | 2003-09-29 |  |  |  | 39d |  |  |  |  |  |  |
| 16 | 4 | **Color scale library** | 16d | 2003-09-29 | 2003-10-20 |  |  |  | 24d |  |  |  |  | 72h |  |
| 17 | 4.1 | Specification color scale in Gemec | 1d | 2003-10-01 | 2003-10-01 |  |  |  | 24d | 0d |  |  | lnb | 8h |  |
| 18 | 4.2 | Specification color scale library | 2d | 2003-10-02 | 2003-10-03 | 17 |  |  | 27d | 0d |  |  | lnb | 16h |  |
| 19 | 4.3 | Redesign Geomec color scale | 3d | 2003-10-16 | 2003-10-20 | 17 |  |  | 24d |  |  |  | lnb | 24h |  |
| 20 | 4.4 | Implementation library | 2d | 2003-10-13 | 2003-10-14 | 18 |  |  | 27d | 0d |  |  | lnb | 16h |  |
| 21 | 4.5 | Implementation GUI | 1d | 2003-10-15 | 2003-10-15 | 20 |  |  | 27d |  |  |  | lnb | 8h |  |
| 22 | 4.6 | Help | 2d | 2003-09-29 | 2003-09-30 |  |  |  | 38d |  |  |  |  |  |  |
| 23 | 4.7 | Testing | 1d | 2003-09-29 | 2003-09-29 |  |  |  | 39d |  |  |  |  |  |  |
| 24 | 5 | **External kernel support** | 22d | 2003-10-01 A | 2003-10-30 |  | 33% | 14.67d | 15d |  |  |  |  | 72h | 24h |
| 25 | 5.1 | Specify kernel input | 1d | 2003-10-09 A | 2003-10-09 A |  | 100% |  |  |  |  |  | wed | 8h | 8h |
| 26 | 5.2 | Specify kernel output file | 2d | 2003-10-01 A | 2003-10-02 A |  | 100% |  |  |  |  |  | wed | 16h | 16h |
| 27 | 5.3 | Implement kernel input routine | 1d | 2003-10-13 | 2003-10-13 | 25 |  |  | 26d | 0d |  |  | wed | 8h |  |
| 28 | 5.4 | Implement kernel output read routine | 2d | 2003-10-06 | 2003-10-07 | 26 |  |  | 30d | 4d |  |  | wed | 16h |  |
| 29 | 5.5 | Implement test dummy kernel | 2d | 2003-10-14 | 2003-10-15 | 27, 28 |  |  | 26d |  |  |  | wed | 16h |  |
| 30 | 5.6 | Writing help on external kernel support | 1d | 2003-10-30 | 2003-10-30 |  |  |  | 15d |  |  |  | wed | 8h |  |

| ID | WBS | Task | Duration | Start | Finish | Predecessors | Complete | Remaining | Total slack | Free slack | Resources | Work | Actual work |
| --- | --- | --- | --- | --- | --- | --- | --- | --- | --- | --- | --- | --- | --- |
| 31 | 6 | **Stabilize tetra models** | 33d | 2003-09-29 A | 2003-11-12 |  | 3% | 32d | 18d | 7d |  | 344h | 16h |
| 32 | 6.1 | **Testing** | 22d | 2003-09-29 | 2003-10-28 |  |  |  | 29d |  |  | 160h |  |
| 33 | 6.1.1 | Building tetra meshes | 15d | 2003-09-29 | 2003-10-17 |  |  |  | 29d | 0d | shell | 120h |  |
| 34 | 6.1.2 | Build Geological models | 5d | 2003-10-20 | 2003-10-24 | 33 |  |  | 29d | 0d | gdo | 40h |  |
| 35 | 6.1.3 | Test geological models | 2d | 2003-10-27 | 2003-10-28 | 34 |  |  | 29d |  |  |  |  |
| 36 | 6.2 | **Eclipse model** | 7d | 2003-09-29 | 2003-10-07 |  |  |  | 44d |  |  |  |  |
| 37 | 6.2.1 | Completion of specification | 1d | 2003-09-29 | 2003-09-29 |  |  |  | 50d |  |  |  |  |
| 38 | 6.2.2 | Implementation | 7d | 2003-09-29 | 2003-10-07 |  |  |  | 44d |  |  |  |  |
| 39 | 6.2.3 | Help | 4d | 2003-09-29 | 2003-10-02 |  |  |  | 47d |  |  |  |  |
| 40 | 6.2.4 | Testing | 2d | 2003-09-29 | 2003-09-30 |  |  |  | 49d |  |  |  |  |
| 41 | 6.3 | **Inverse volume mapping** | 32d | 2003-09-29 A | 2003-11-11 |  | 40% | 19.2d | 19d |  |  | 32h | 16h |
| 42 | 6.3.1 | Specification | 2d | 2003-09-29 A | 2003-09-30 A |  | 100% |  |  |  | wed | 16h | 16h |
| 43 | 6.3.2 | Implementation | 1d | 2003-11-05 | 2003-11-05 | 42 |  |  | 21d | 0d | wed | 8h |  |
| 44 | 6.3.3 | Help | 1d | 2003-11-06 | 2003-11-06 | 43 |  |  | 21d | 1d |  |  |  |
| 45 | 6.3.4 | Testing | 1d | 2003-11-11 | 2003-11-11 | 44 |  |  | 19d |  | wed | 8h |  |
| 46 | 6.4 | **Bug fixing** | 20d | 2003-09-29 | 2003-10-24 |  |  |  | 31d |  |  | 120h |  |
| 47 | 6.4.1 | Mantis | 10d | 2003-09-29 | 2003-10-10 |  |  |  | 41d |  | tnma | 80h |  |
| 48 | 6.4.2 | Bugs mesher | 5d | 2003-10-20 | 2003-10-24 | 33 |  |  | 31d |  | mrh | 40h |  |
| 49 | 6.5 | **Prescribed displacements/boundary loads** | 33d | 2003-09-29 | 2003-11-12 |  |  |  | 18d |  |  | 32h |  |
| 50 | 6.5.1 | Finalisation | 2d | 2003-11-06 | 2003-11-10 |  |  |  | 18d | 0d | wed | 16h |  |
| 51 | 6.5.2 | Testing | 2d | 2003-11-11 | 2003-11-12 | 50 |  |  | 18d |  | gdo | 16h |  |
| 52 | 6.5.3 | Help | 1d | 2003-09-29 | 2003-09-29 |  |  |  | 50d |  |  |  |  |
| 53 | 6.6 | Finalise help on Tetra model | 5d | 2003-09-29 | 2003-10-03 |  |  |  | 46d |  |  |  |  |
| 54 | 7 | **Results on deformed mesh** | 8d | 2003-09-29 | 2003-10-08 |  |  |  | 32d |  |  | 16h |  |
| 55 | 7.1 | Redesign mesh architecture | 2d | 2003-09-29 | 2003-09-30 |  |  |  | 32d | 0d | wed; lnb | 16h |  |
| 56 | 7.2 | Adapt core mesh in geometry | 3d | 2003-10-01 | 2003-10-03 | 55 |  |  | 32d | 0d |  |  |  |
| 57 | 7.3 | Integrate mesh archtecture in Geomec | 3d | 2003-10-06 | 2003-10-08 | 56 |  |  | 32d |  |  |  |  |
| 58 | 7.4 | Testing | 2d | 2003-09-29 | 2003-09-30 |  |  |  | 38d |  |  |  |  |
| 59 | 7.5 | Help | 1d | 2003-09-29 | 2003-09-29 |  |  |  | 39d |  |  |  |  |

| ID | WBS | Task | Type | Duration | Start | Finish | Predecessors | Total slack | Free slack | Constraint | Resources | Work |
| --- | --- | --- | --- | --- | --- | --- | --- | --- | --- | --- | --- | --- |
| 60 | 8 | **History plots** |  | 40d | 2003-09-29 | 2003-11-21 |  | 0d |  |  |  | 16h |
| 61 | 8.1 | Specification for history plotes |  | 2d | 2003-10-01 | 2003-10-02 |  | 31d |  |  | gdo | 16h |
| 62 | 8.2 | Implementation of history plots |  | 5d | 2003-11-17 | 2003-11-21 | 8, 61 | 0d |  |  |  |  |
| 63 | 8.3 | Implentation point selection |  | 2d | 2003-09-29 | 2003-09-30 |  | 38d |  |  |  |  |
| 64 | 8.4 | Testing |  | 2d | 2003-09-29 | 2003-09-30 |  | 38d |  |  |  |  |
| 65 | 8.5 | Help |  | 1d | 2003-09-29 | 2003-09-29 |  | 39d |  |  |  |  |
| 66 | 9 | **Geometric non-lin analysis** |  | 6d | 2003-09-29 | 2003-10-06 |  | 24d |  |  |  | 16h |
| 67 | 9.1 | Adjust kernel | milestone | 0d | 2003-09-29 | 2003-09-29 |  | 24d | 0d | finish no later than 2003-10-30 | ssga |  |
| 68 | 9.2 | Control kernel from Geomec |  | 1d | 2003-09-29 | 2003-09-29 | 67 | 37d | 0d |  |  |  |
| 69 | 9.3 | Testing the kernel in geoemec |  | 2d | 2003-09-30 | 2003-10-01 | 68 | 37d |  |  |  |  |
| 70 | 9.4 | Help |  | 2d | 2003-10-03 | 2003-10-06 |  | 34d |  |  | gdo | 16h |
| 71 | 10 | **Hardening/softening in Mohr-coulomb** |  | 20d | 2003-10-07 | 2003-11-03 |  | 14d |  |  |  | 72h |
| 72 | 10.1 | Specification |  | 1d | 2003-11-03 | 2003-11-03 |  | 13d |  |  | wed | 8h |
| 73 | 10.2 | Implementation |  | 5d | 2003-10-08 | 2003-10-22 |  | 21d |  |  | wed | 40h |
| 74 | 10.3 | Testing |  | 2d | 2003-10-07 | 2003-10-08 |  | 32d |  |  | gdo | 16h |
| 75 | 10.4 | Help |  | 1d | 2003-10-09 | 2003-10-09 |  | 31d |  |  | gdo | 8h |
| 76 | 11 | HTML Help in MatLibX |  | 2d | 2003-10-23 | 2003-10-27 |  | 18d |  |  | wed | 16h |
| 77 | 12 | **Material Calibration** |  | 27d? | 2003-09-29 | 2003-11-04 |  | 13d |  |  |  | 32h |
| 78 | 12.1 | Specification |  | 1d? | 2003-09-29 | 2003-09-29 |  | 39d |  |  | ssga | 8h |
| 79 | 12.2 | Kernel calibration MC41 | milestone | 0d | 2003-09-29 | 2003-09-29 |  | 40d |  |  | ssga |  |
| 80 | 12.3 | Adapt MatLibX |  | 2d | 2003-10-28 | 2003-10-29 |  | 16d |  |  | wed | 16h |
| 81 | 12.4 | Testing |  | 1d | 2003-11-04 | 2003-11-04 |  | 12d |  |  | wed | 8h |
| 82 | 13 | Bug fixing 3.2 |  | 5d | 2003-09-29 | 2003-10-03 |  | 35d |  |  |  |  |
| 83 | 14 | Code ready | milestone | 0d | 2003-11-21 | 2003-11-21 | 31, 6 | 11d |  | finish no later than 2003-12-08 |  |  |
